# RapidSilicon

How a schedule from ProjectLibre changed from version to version. A marks actual dates.

## Version 1 (saved 2021-09-09, file Core-V-MCU-SoC-Plan.pod)

Note of the change: ProjectLibre file which is based on MCU SoC Project Plan spreadsheet

| ID | WBS | Task | Duration | Start | Finish | Complete | Constraint |
| --- | --- | --- | --- | --- | --- | --- | --- |
| 1 | 1 | **Core-V-MCU-SoC (Arnold2)** | 120d? | 2021-04-12 | 2021-09-24 | 37% |  |
| 2 | 1.1 | **Documentation and Gate Review** | 106d? | 2021-04-12 | 2021-09-06 | 26% |  |
| 3 |  | Update PL document | 1d | 2021-04-12 | 2021-04-12 | 100% |  |
| 4 |  | Complete Project plan document/spreadsheet | 1d? | 2021-04-12 | 2021-04-12 | 100% |  |
| 5 |  | SoC specification | 5d | 2021-04-12 | 2021-04-16 |  |  |
| 6 |  | User Manual (ReadTheDocs) | 1d? | 2021-04-12 | 2021-04-12 |  |  |
| 7 |  | Datasheet include operating conditions, AC/DC parameters, basic timing information | 1d? | 2021-09-06 | 2021-09-06 |  | start no earlier than 2021-09-06 |
| 8 |  | "Whole Product Test" spec (SoC/s/w testing - preRTOS, FreeRTOS) | 3.75d | 2021-04-12 | 2021-04-15 | 50% |  |
| 9 |  | Development kit specification/user guide | 1d? | 2021-04-12 | 2021-04-12 |  |  |
| 10 |  | Development kit examples/demos (To be moved to DVK group) | 1d? | 2021-04-12 | 2021-04-12 |  |  |
| 11 |  | Characterization plan (testing operation of the first received board and chip)_ | 1d? | 2021-04-12 | 2021-04-12 |  |  |
| 12 | 1.2 | **Project Setup** | 15.5d? | 2021-04-12 | 2021-05-03 | 50% |  |
| 13 |  | Merge Quicklogic/OpenHW Repo | 1d? | 2021-04-12 | 2021-04-12 | 100% |  |
| 14 |  | Repo review, license review for CQ | 0.5d? | 2021-05-03 | 2021-05-03 |  | start no earlier than 2021-05-03 |
| 15 | 1.3 | **SoC Front End Design** | 45d? | 2021-05-03 | 2021-07-05 | 50% |  |
| 16 |  | Identify/procure the PLL source | 1d? | 2021-05-03 | 2021-05-03 |  | start no earlier than 2021-05-03 |
| 17 |  | Design verification plan, including bare-metal for verification | 5d | 2021-05-03 | 2021-05-07 |  | start no earlier than 2021-05-03 |
| 18 | 1.3.3 | **RTL Freeze checklist creation** | 3d? | 2021-05-03 | 2021-05-05 | 67% | start no earlier than 2021-05-03 |
| 19 | 1.3.3.1 | **Documentation** | 1d? | 2021-05-03 | 2021-05-03 | 68% |  |
| 20 |  | Simple Block Diagram | 1d? | 2021-05-03 | 2021-05-03 | 100% |  |
| 21 |  | System Addresses Mapping | 1d? | 2021-05-03 | 2021-05-03 | 100% |  |
| 22 |  | System Test & Test Modes | 1d? | 2021-05-03 | 2021-05-03 |  |  |
| 23 |  | Power Management | 1d? | 2021-05-03 | 2021-05-03 |  |  |
| 24 |  | System Clocks | 1d? | 2021-05-03 | 2021-05-03 | 75% |  |
| 25 |  | System Reset | 1d? | 2021-05-03 | 2021-05-03 | 100% |  |
| 26 |  | System programming & Update | 1d? | 2021-05-03 | 2021-05-03 | 100% |  |
| 27 | 1.3.3.2 | **Modules & Regs Description** | 1d? | 2021-05-03 | 2021-05-03 | 75% |  |
| 28 | 1.3.3.2.1 | **Non UDMA** | 1d? | 2021-05-03 | 2021-05-03 | 67% |  |
| 29 |  | FLL | 1d? | 2021-05-03 | 2021-05-03 |  |  |
| 30 |  | eFPGA | 1d? | 2021-05-03 | 2021-05-03 |  |  |
| 31 |  | I2Cslave | 1d? | 2021-05-03 | 2021-05-03 | 100% |  |
| 32 |  | Timers | 1d? | 2021-05-03 | 2021-05-03 | 100% |  |
| 33 |  | Interrupt Controller | 1d? | 2021-05-03 | 2021-05-03 | 100% |  |
| 34 |  | Boot ROM | 1d? | 2021-05-03 | 2021-05-03 | 100% |  |
| 35 |  | FCB | 1d? | 2021-05-03 | 2021-05-03 | 100% |  |
| 36 |  | GPIO | 1d? | 2021-05-03 | 2021-05-03 | 100% |  |
| 37 |  | Other stuff | 1d? | 2021-05-03 | 2021-05-03 |  |  |
| 38 | 1.3.3.2.2 | **UDMA** | 1d? | 2021-05-03 | 2021-05-03 | 83% |  |
| 39 |  | UART | 1d? | 2021-05-03 | 2021-05-03 | 100% |  |
| 40 |  | I2C master | 1d? | 2021-05-03 | 2021-05-03 | 100% |  |
| 41 |  | QSPI master | 1d? | 2021-05-03 | 2021-05-03 | 100% |  |
| 42 |  | CAM | 1d? | 2021-05-03 | 2021-05-03 | 50% |  |
| 43 |  | SDIO | 1d? | 2021-05-03 | 2021-05-03 | 100% |  |
| 44 |  | Debug I/F | 1d? | 2021-05-03 | 2021-05-03 | 100% |  |
| 45 |  | PLL modules | 1d? | 2021-05-03 | 2021-05-03 |  |  |
| 46 |  | eFPGA | 1d? | 2021-05-03 | 2021-05-03 | 100% |  |
| 47 |  | Math Blocks | 1d? | 2021-05-03 | 2021-05-03 | 100% |  |
| 48 |  | Device IO | 1d? | 2021-05-03 | 2021-05-03 | 80% |  |
| 49 | 1.3.3.3 | **Designs** | 3d? | 2021-05-03 | 2021-05-05 | 68% |  |
| 50 | 1.3.3.3.1 | **RTL** | 1d? | 2021-05-03 | 2021-05-03 | 68% |  |
| 51 |  | Top module | 1d? | 2021-05-03 | 2021-05-03 | 100% |  |
| 52 | 1.3.3.3.1.2 | **Non UDMA** | 1d? | 2021-05-03 | 2021-05-03 | 100% |  |
| 53 |  | FLL (Xilinx for Emulation) | 1d? | 2021-05-03 | 2021-05-03 | 100% |  |
| 54 |  | PLL (SoC target) | 1d? | 2021-05-03 | 2021-05-03 | 100% |  |
| 55 |  | eFPGA | 1d? | 2021-05-03 | 2021-05-03 | 100% |  |
| 56 |  | I2Cslave | 1d? | 2021-05-03 | 2021-05-03 | 100% |  |
| 57 |  | Timers | 1d? | 2021-05-03 | 2021-05-03 | 100% |  |
| 58 |  | Interrupt Controller | 1d? | 2021-05-03 | 2021-05-03 | 100% |  |
| 59 |  | Boot ROM | 1d? | 2021-05-03 | 2021-05-03 | 100% |  |
| 60 |  | FCB | 1d? | 2021-05-03 | 2021-05-03 | 100% |  |
| 61 |  | GPIO | 1d? | 2021-05-03 | 2021-05-03 | 100% |  |
| 62 |  | Other stuff | 1d? | 2021-05-03 | 2021-05-03 | 100% |  |
| 63 | 1.3.3.3.1.3 | **UDMA** | 1d? | 2021-05-03 | 2021-05-03 | 58% |  |
| 64 |  | UART | 1d? | 2021-05-03 | 2021-05-03 | 100% |  |
| 65 |  | I2C master | 1d? | 2021-05-03 | 2021-05-03 | 100% |  |
| 66 |  | QSPI master | 1d? | 2021-05-03 | 2021-05-03 | 100% |  |
| 67 |  | CAM | 1d? | 2021-05-03 | 2021-05-03 | 50% |  |
| 68 |  | SDIO | 1d? | 2021-05-03 | 2021-05-03 |  |  |
| 69 |  | Debug I/F | 1d? | 2021-05-03 | 2021-05-03 |  |  |
| 70 | 1.3.3.3.1.4 | **eFPGA** | 1d? | 2021-05-03 | 2021-05-03 | 87% |  |

| ID | WBS | Task | Duration | Start | Finish | Complete |
| --- | --- | --- | --- | --- | --- | --- |
| 71 |  | Get VQ file running | 1d? | 2021-05-03 | 2021-05-03 | 70% |
| 72 |  | Test VQ | 1d? | 2021-05-03 | 2021-05-03 |  |
| 73 |  | Integrate FCB | 1d? | 2021-05-03 | 2021-05-03 | 100% |
| 74 |  | Validate FCB | 1d? | 2021-05-03 | 2021-05-03 | 100% |
| 75 |  | Integrate APB | 1d? | 2021-05-03 | 2021-05-03 | 100% |
| 76 |  | Validate APB | 1d? | 2021-05-03 | 2021-05-03 | 100% |
| 77 |  | Integrate TCDM | 1d? | 2021-05-03 | 2021-05-03 | 100% |
| 78 |  | Validate TCDM | 1d? | 2021-05-03 | 2021-05-03 | 100% |
| 79 |  | Integrate Event pins | 1d? | 2021-05-03 | 2021-05-03 | 100% |
| 80 |  | Validate Event pins | 1d? | 2021-05-03 | 2021-05-03 | 100% |
| 81 | 1.3.3.3.1.5 | **Math Blocks** | 1d? | 2021-05-03 | 2021-05-03 | 78% |
| 82 |  | 4-bit mode | 1d? | 2021-05-03 | 2021-05-03 | 100% |
| 83 |  | Lengthed accumulator | 1d? | 2021-05-03 | 2021-05-03 | 100% |
| 84 |  | Memory block sharing (3 per 2) | 1d? | 2021-05-03 | 2021-05-03 | 100% |
| 85 |  | Integrate 4 math blocks | 1d? | 2021-05-03 | 2021-05-03 | 100% |
| 86 |  | Validate math blocks | 1d? | 2021-05-03 | 2021-05-03 | 100% |
| 87 |  | Integrate eFPGA IO | 1d? | 2021-05-03 | 2021-05-03 | 100% |
| 88 |  | Validate eFPGA IO | 1d? | 2021-05-03 | 2021-05-03 | 100% |
| 89 |  | Integrate eFPGA test modes | 1d? | 2021-05-03 | 2021-05-03 |  |
| 90 |  | Validate eFPGA test modes | 1d? | 2021-05-03 | 2021-05-03 |  |
| 91 | 1.3.3.3.1.6 | **IO** | 1d? | 2021-05-03 | 2021-05-03 | 23% |
| 92 |  | Define VDDIO scheme | 1d? | 2021-05-03 | 2021-05-03 |  |
| 93 |  | Define physical I/O ring | 1d? | 2021-05-03 | 2021-05-03 |  |
| 94 |  | Finalize pin-table | 1d? | 2021-05-03 | 2021-05-03 | 90% |
| 95 |  | Integrate IO ring | 1d? | 2021-05-03 | 2021-05-03 |  |
| 96 | 1.3.3.3.1.7 | **I2C Slave** | 1d? | 2021-05-03 | 2021-05-03 | 100% |
| 97 |  | Create RTL | 1d? | 2021-05-03 | 2021-05-03 | 100% |
| 98 |  | Integrate I2C Slave | 1d? | 2021-05-03 | 2021-05-03 | 100% |
| 99 | 1.3.3.3.1.8 | **Power Management** | 1d? | 2021-05-03 | 2021-05-03 |  |
| 100 |  | Decide on LDO | 1d? | 2021-05-03 | 2021-05-03 |  |
| 101 |  | Source LDO | 1d? | 2021-05-03 | 2021-05-03 |  |
| 102 |  | Integrate | 1d? | 2021-05-03 | 2021-05-03 |  |
| 103 | 1.3.3.3.1.9 | **Test Logics** | 1d? | 2021-05-03 | 2021-05-03 |  |
| 104 |  | Logic test | 1d? | 2021-05-03 | 2021-05-03 |  |
| 105 |  | EFPGA test | 1d? | 2021-05-03 | 2021-05-03 |  |
| 106 |  | Memory test | 1d? | 2021-05-03 | 2021-05-03 |  |
| 107 |  | FLL test | 1d? | 2021-05-03 | 2021-05-03 |  |
| 108 | 1.3.3.3.2 | **RTL Verification** | 1d? | 2021-05-03 | 2021-05-03 | 59% |
| 109 | 1.3.3.3.2.1 | **Setup Verification Environment** | 1d? | 2021-05-03 | 2021-05-03 | 50% |
| 110 |  | Tools decision | 1d? | 2021-05-03 | 2021-05-03 | 100% |
| 111 |  | TestBench Development | 1d? | 2021-05-03 | 2021-05-03 | 100% |
| 112 | 1.3.3.3.2.1.3 | **Collect/Create Peripherals (VPI)** | 1d? | 2021-05-03 | 2021-05-03 | 50% |
| 113 |  | SPI Flash | 1d? | 2021-05-03 | 2021-05-03 |  |
| 114 |  | I2C Slave device | 1d? | 2021-05-03 | 2021-05-03 | 100% |
| 115 |  | I2C Master device | 1d? | 2021-05-03 | 2021-05-03 | 100% |
| 116 |  | CAM device IP | 1d? | 2021-05-03 | 2021-05-03 | 50% |
| 117 |  | SDIO | 1d? | 2021-05-03 | 2021-05-03 |  |
| 118 |  | UART IP | 1d? | 2021-05-03 | 2021-05-03 | 100% |
| 119 |  | PLL | 1d? | 2021-05-03 | 2021-05-03 |  |
| 120 | 1.3.3.3.2.1.4 | **Collect/Create Behavioral models for Hard IPs** | 1d? | 2021-05-03 | 2021-05-03 |  |
| 121 |  | ROM | 1d? | 2021-05-03 | 2021-05-03 |  |
| 122 |  | L2 RAM | 1d? | 2021-05-03 | 2021-05-03 |  |
| 123 |  | Inferred RAM I2C M | 1d? | 2021-05-03 | 2021-05-03 |  |
| 124 |  | Math Block Register File | 1d? | 2021-05-03 | 2021-05-03 |  |
| 125 |  | Others | 1d? | 2021-05-03 | 2021-05-03 |  |
| 126 |  | Instantiate periphrals | 1d? | 2021-05-03 | 2021-05-03 | 100% |
| 127 |  | Create test-cases top level | 1d? | 2021-05-03 | 2021-05-03 | 100% |
| 128 |  | Instantiate SoC RTL | 1d? | 2021-05-03 | 2021-05-03 | 100% |
| 129 |  | CORE-V-MCU Block | 1d? | 2021-05-03 | 2021-05-03 |  |
| 130 | 1.3.3.3.2.3 | **APB** | 1d? | 2021-05-03 | 2021-05-03 | 77% |
| 131 |  | PLL | 1d? | 2021-05-03 | 2021-05-03 |  |
| 132 |  | FLL | 1d? | 2021-05-03 | 2021-05-03 |  |
| 133 |  | I2Cslave | 1d? | 2021-05-03 | 2021-05-03 | 100% |
| 134 |  | Timers | 1d? | 2021-05-03 | 2021-05-03 | 100% |
| 135 | 1.3.3.3.2.3.5 | **Interrupt Controller** | 1d? | 2021-05-03 | 2021-05-03 | 100% |
| 136 |  | Event Pins | 1d? | 2021-05-03 | 2021-05-03 | 100% |
| 137 |  | Fast IRQ | 1d? | 2021-05-03 | 2021-05-03 | 100% |
| 138 |  | GPIO | 1d? | 2021-05-03 | 2021-05-03 | 100% |
| 139 | 1.3.3.3.2.3.6 | **SoC Control** | 1d? | 2021-05-03 | 2021-05-03 | 83% |
| 140 |  | Pin Mux | 1d? | 2021-05-03 | 2021-05-03 | 100% |

| ID | WBS | Task | Duration | Start | Finish | Complete |
| --- | --- | --- | --- | --- | --- | --- |
| 141 |  | PAD Config | 1d? | 2021-05-03 | 2021-05-03 |  |
| 142 |  | WatchDog Timer | 1d? | 2021-05-03 | 2021-05-03 | 90% |
| 143 |  | Ready Timer | 1d? | 2021-05-03 | 2021-05-03 | 100% |
| 144 |  | Soft Reset Circuits | 1d? | 2021-05-03 | 2021-05-03 | 100% |
| 145 |  | Boot Select Status | 1d? | 2021-05-03 | 2021-05-03 | 100% |
| 146 |  | Boot ROM | 1d? | 2021-05-03 | 2021-05-03 | 90% |
| 147 | 1.3.3.3.2.4 | **UDMA** | 1d? | 2021-05-03 | 2021-05-03 | 58% |
| 148 |  | UART | 1d? | 2021-05-03 | 2021-05-03 | 100% |
| 149 |  | I2C master | 1d? | 2021-05-03 | 2021-05-03 | 100% |
| 150 |  | QSPI master | 1d? | 2021-05-03 | 2021-05-03 | 100% |
| 151 |  | CAM | 1d? | 2021-05-03 | 2021-05-03 | 50% |
| 152 |  | SDIO | 1d? | 2021-05-03 | 2021-05-03 |  |
| 153 |  | Debug I/F | 1d? | 2021-05-03 | 2021-05-03 |  |
| 154 | 1.3.3.3.2.5 | **eFPGA** | 1d? | 2021-05-03 | 2021-05-03 | 100% |
| 155 |  | FCB | 1d? | 2021-05-03 | 2021-05-03 | 100% |
| 156 |  | IO Ring | 1d? | 2021-05-03 | 2021-05-03 | 100% |
| 157 |  | ASSP interface | 1d? | 2021-05-03 | 2021-05-03 | 100% |
| 158 |  | Math Blocks | 1d? | 2021-05-03 | 2021-05-03 | 100% |
| 159 |  | TCDM | 1d? | 2021-05-03 | 2021-05-03 | 100% |
| 160 |  | APB | 1d? | 2021-05-03 | 2021-05-03 | 100% |
| 161 |  | LDO | 1d? | 2021-05-03 | 2021-05-03 |  |
| 162 | 1.3.3.3.2.8 | **Test Logics** | 1d? | 2021-05-03 | 2021-05-03 |  |
| 163 |  | Logic test | 1d? | 2021-05-03 | 2021-05-03 |  |
| 164 |  | EFPGA test | 1d? | 2021-05-03 | 2021-05-03 |  |
| 165 |  | Memory test | 1d? | 2021-05-03 | 2021-05-03 |  |
| 166 |  | FLL test | 1d? | 2021-05-03 | 2021-05-03 |  |
| 167 | 1.3.3.3.3 | **Design Compiler Synthesis** | 1d? | 2021-05-03 | 2021-05-03 |  |
| 168 | 1.3.3.3.3.1 | **Constraints Setup** | 1d? | 2021-05-03 | 2021-05-03 |  |
| 169 |  | Get Synthesis Silicon Constraints | 1d? | 2021-05-03 | 2021-05-03 |  |
| 170 |  | Define System Clock Constraints | 1d? | 2021-05-03 | 2021-05-03 |  |
| 171 |  | Get Test Synthesis Constraints | 1d? | 2021-05-03 | 2021-05-03 |  |
| 172 |  | Implement synthesis scripts | 1d? | 2021-05-03 | 2021-05-03 |  |
| 173 |  | Execute Synthesis and Fix errors | 1d? | 2021-05-03 | 2021-05-03 |  |
| 174 | 1.3.3.3.4 | **Emulation Validation - Nexys A7** | 1d? | 2021-05-03 | 2021-05-03 | 94% |
| 175 |  | Define Emulation system & Peripherals | 1d? | 2021-05-03 | 2021-05-03 | 100% |
| 176 |  | Implement Nightly Build scripts | 1d? | 2021-05-03 | 2021-05-03 | 100% |
| 177 |  | Implement Emulation Build scripts | 1d? | 2021-05-03 | 2021-05-03 | 100% |
| 178 | 1.3.3.3.4.4 | **Develop Test SW for emulkation** | 1d? | 2021-05-03 | 2021-05-03 | 91% |
| 179 |  | CLI Framework | 1d? | 2021-05-03 | 2021-05-03 | 100% |
| 180 |  | Add I2Cmaster tests | 1d? | 2021-05-03 | 2021-05-03 | 100% |
| 181 |  | Add UART tests | 1d? | 2021-05-03 | 2021-05-03 | 100% |
| 182 |  | Add QSPImaster tests | 1d? | 2021-05-03 | 2021-05-03 | 100% |
| 183 |  | Add Camera Tests | 1d? | 2021-05-03 | 2021-05-03 | 50% |
| 184 |  | Add IO tests | 1d? | 2021-05-03 | 2021-05-03 | 100% |
| 185 |  | Add MathBlocks tests | 1d? | 2021-05-03 | 2021-05-03 | 100% |
| 186 |  | Add System memory tests | 1d? | 2021-05-03 | 2021-05-03 | 100% |
| 187 |  | Add BootLoader | 1d? | 2021-05-03 | 2021-05-03 | 100% |
| 188 |  | Add TCDM tests | 1d? | 2021-05-03 | 2021-05-03 | 100% |
| 189 |  | Add UDMA tests | 1d? | 2021-05-03 | 2021-05-03 | 100% |
| 190 |  | Add I2Cslave tests | 1d? | 2021-05-03 | 2021-05-03 | 100% |
| 191 |  | Add Camera interface tests | 1d? | 2021-05-03 | 2021-05-03 | 100% |
| 192 |  | Add test Logic tests | 1d? | 2021-05-03 | 2021-05-03 |  |
| 193 |  | Add FPGA FCB tests | 1d? | 2021-05-03 | 2021-05-03 | 100% |
| 194 |  | Add FPGA IO tests | 1d? | 2021-05-03 | 2021-05-03 | 100% |
| 195 |  | Add FPGA ASSP interface tests | 1d? | 2021-05-03 | 2021-05-03 | 100% |
| 196 | 1.3.3.3.4.5 | **Emulation Validation** | 1d? | 2021-05-03 | 2021-05-03 | 96% |
| 197 |  | Validate UART | 1d? | 2021-05-03 | 2021-05-03 | 100% |
| 198 |  | Validate I2C master | 1d? | 2021-05-03 | 2021-05-03 | 100% |
| 199 |  | Validate QSPI master | 1d? | 2021-05-03 | 2021-05-03 | 100% |
| 200 |  | Validate GPIO | 1d? | 2021-05-03 | 2021-05-03 | 100% |
| 201 |  | Validate GPIO interrupts | 1d? | 2021-05-03 | 2021-05-03 | 100% |
| 202 |  | Validate CAM | 1d? | 2021-05-03 | 2021-05-03 | 50% |
| 203 |  | Validate I2C slave | 1d? | 2021-05-03 | 2021-05-03 | 100% |
| 204 |  | Validate PWM | 1d? | 2021-05-03 | 2021-05-03 | 100% |
| 205 |  | Validate timers | 1d? | 2021-05-03 | 2021-05-03 | 100% |
| 206 |  | Validate interrupts | 1d? | 2021-05-03 | 2021-05-03 | 100% |
| 207 |  | Validate all memory | 1d? | 2021-05-03 | 2021-05-03 | 100% |
| 208 |  | Validate boot | 1d? | 2021-05-03 | 2021-05-03 | 100% |
| 209 |  | Validate debug access | 1d? | 2021-05-03 | 2021-05-03 | 100% |
| 210 |  | Validate Clocks | 1d? | 2021-05-03 | 2021-05-03 | 100% |

| ID | WBS | Task | Duration | Start | Finish | Predecessors | Constraint |
| --- | --- | --- | --- | --- | --- | --- | --- |
| 211 | 1.3.3.3.5 | **Backend Design Update** | 2d? | 2021-05-04 | 2021-05-05 |  |  |
| 212 |  | RC Backend feedback update | 1d? | 2021-05-05 | 2021-05-05 | 216 |  |
| 213 |  | Silver Backend feedback update | 1d? | 2021-05-04 | 2021-05-04 | 217 |  |
| 214 | 1.3.3.4 | **SoC RTL Milestones** | 2d? | 2021-05-03 | 2021-05-04 |  |  |
| 215 |  | Milestone 1 - Golden RTL for emulation | 1d? | 2021-05-03 | 2021-05-03 |  |  |
| 216 |  | Milestone 2 - RC for backend release | 1d? | 2021-05-04 | 2021-05-04 | 50, 108 |  |
| 217 |  | Milestone 3 - Silver for backend release | 1d? | 2021-05-03 | 2021-05-03 |  |  |
| 218 |  | Milestone 4 - Golden for backend release | 1d? | 2021-05-03 | 2021-05-03 |  |  |
| 219 |  | RTL Freeze/Golden RTL | 20d | 2021-05-03 | 2021-05-28 |  | start no earlier than 2021-05-03 |
| 220 |  | Do synthesis | 30d | 2021-05-03 | 2021-06-11 |  | start no earlier than 2021-04-12 |
| 221 |  | Complete synthesis/Golden netlist | 0d | 2021-07-05 | 2021-07-05 |  | start no earlier than 2021-07-05 |
| 222 | 1.4 | **SoC BackEnd design** | 60d | 2021-07-05 | 2021-09-24 |  |  |
| 223 |  | Start place and route | 1d | 2021-07-05 | 2021-07-05 |  | start no earlier than 2021-07-05 |
| 224 |  | GDS Freeze checklist | 5d | 2021-07-05 | 2021-07-09 |  | start no earlier than 2021-07-05 |
| 225 |  | Complete place and route, GDS | 60d | 2021-07-05 | 2021-09-24 |  | start no earlier than 2021-07-05 |
| 226 |  | Design submission (MPW2243, est. delivery date 2022-03-31) | 1d | 2021-09-06 | 2021-09-06 |  | start no earlier than 2021-09-06 |
| 227 | 1.5 | **SoC Packaging and Test** | 1d? | 2021-04-12 | 2021-04-12 |  |  |
| 228 |  | Production test plan (IC) | 1d? | 2021-04-12 | 2021-04-12 |  |  |
| 229 |  | Packaging plan - low volume, ~50 I/Os, wire-bonding | 1d? | 2021-04-12 | 2021-04-12 |  |  |
| 230 |  | Chip packaging | 1d? | 2021-04-12 | 2021-04-12 |  |  |
| 231 |  | Chip/packaging test | 1d? | 2021-04-12 | 2021-04-12 |  |  |
| 232 | 1.6 | **Bench PCB Design and Manufacture** | 1d? | 2021-04-12 | 2021-04-12 |  |  |
| 233 |  | PCB Specification | 1d? | 2021-04-12 | 2021-04-12 |  |  |
| 234 |  | PCB Design | 1d? | 2021-04-12 | 2021-04-12 |  |  |
| 235 |  | PCB manufacturing and assembly | 1d? | 2021-04-12 | 2021-04-12 |  |  |
| 236 |  | Initial bringup PCB testing | 1d? | 2021-04-12 | 2021-04-12 |  |  |
| 238 | 1.7 | **DVK PCB Design and Manufacture** | 1d? | 2021-04-12 | 2021-04-12 |  |  |
| 239 |  | PCB Specification | 1d? | 2021-04-12 | 2021-04-12 |  |  |
| 240 |  | PCB Design | 1d? | 2021-04-12 | 2021-04-12 |  |  |
| 241 |  | PCB manufacturing and assembly | 1d? | 2021-04-12 | 2021-04-12 |  |  |
| 242 |  | Initial bringup PCB testing | 1d? | 2021-04-12 | 2021-04-12 |  |  |

## Version 2 (saved 2021-09-22, file Core-V-MCU-SoC-Plan_V1.2.pod)

Last finish 2021-09-24 → 2022-01-17 (+115d). Complete tasks 108 → 109.

Added:

| ID | Task | Duration | Start | Finish | Predecessors | Constraint | Resources |
| --- | --- | --- | --- | --- | --- | --- | --- |
| 10 | Development kit user guide | 7d? | 2021-10-06 | 2021-10-14 | 9 |  | Anthony |
| 19 | **Design Completion** | 109d? | 2021-05-03 | 2021-09-30 |  |  |  |
| 20 | PLL connected | 1d | 2021-09-27 | 2021-09-27 | 17 |  | Greg |
| 21 | eFPGA test mode | 1d? | 2021-05-03 | 2021-05-04 | 26 |  | Randy |
| 22 | Resolve IO details such as POWEROK signal | 1d | 2021-09-28 | 2021-09-28 | 20 |  | Greg |
| 23 | Triage error/warning messages | 1d | 2021-09-29 | 2021-09-29 | 21 | start no earlier than 2021-09-29 | Greg |
| 24 | SDC time constraints | 1d | 2021-09-30 | 2021-09-30 | 22 | start no earlier than 2021-09-30 | Greg |
| 25 | Resolve blackboxes such as register files | 1d? | 2021-09-30 | 2021-09-30 | 23 |  | Greg |
| 26 | Run all verification test on post synthesis | 0.33d? | 2021-05-03 | 2021-05-03 |  |  | Greg; Randy; Somesh |
| 27 | Run all verification test on post P&R netlist | 0.33d? | 2021-09-27 | 2021-09-27 | 231 |  | Greg; Randy; Somesh |
| 28 | **RTL Freeze** | 3d? | 2021-05-03 | 2021-05-05 |  | start no earlier than 2021-05-03 |  |
| 160 | Debug I/F (emulation) | 1d? | 2021-05-03 | 2021-05-03 |  |  | Greg |
| 241 | PCB Layout | 10d? | 2021-10-25 | 2021-11-05 | 239 | start no earlier than 2021-10-25 | Anthony |
| 247 | PCB Schematic Design | 5d? | 2021-11-15 | 2021-11-19 | 246 | start no earlier than 2021-11-15 | Anthony |
| 248 | PCB Layout | 10d? | 2021-11-22 | 2021-12-03 | 247 | start no earlier than 2021-11-22 | Anthony |
| 251 | PCB User Guide | 5d? | 2022-01-11 | 2022-01-17 | 250 | start no earlier than 2022-01-11 | Anthony |

Removed: 18 RTL Freeze checklist creation; 89 Integrate eFPGA test modes; 90 Validate eFPGA test modes; 152 SDIO; 153 Debug I/F; 161 LDO; 234 PCB Design

Changed:

| ID | Task | Start | Finish | Duration | Complete | Predecessors | Other |
| --- | --- | --- | --- | --- | --- | --- | --- |
| 1 | **Core-V-MCU-SoC (Arnold2)** |  | 2021-09-24 → 2022-01-17 (+115d) | 120d? → 201d? | 37% → 28% |  |  |
| 2 | **Documentation and Gate Review** |  | 2021-09-06 → 2021-12-09 (+94d) | 106d? → 174d? | 26% → 9% |  |  |
| 3 | Update PL document |  | 2021-04-12 → 2021-05-03 (+21d) |  |  |  |  |
| 4 | Complete Project plan document/spreadsheet |  | 2021-04-12 → 2021-05-03 (+21d) |  |  |  |  |
| 5 | SoC specification | 2021-04-12 → 2021-09-28 (+169d) | 2021-04-16 → 2021-09-29 (+166d) | 5d → 2d |  |  | constraint none → start no earlier than 2021-09-28 |
| 6 | User Manual (ReadTheDocs) | 2021-04-12 → 2021-09-27 (+168d) | 2021-04-12 → 2021-09-27 (+168d) |  |  | none → 228 |  |
| 7 | Datasheet include operating conditions, AC/DC parameters, basic timing information | 2021-09-06 → 2021-12-09 (+94d) | 2021-09-06 → 2021-12-09 (+94d) |  |  | none → 238 |  |
| 8 | "Whole Product Test" spec (SoC/s/w testing - preRTOS, FreeRTOS) | 2021-04-12 → 2021-09-22 (+163d) | 2021-04-15 → 2021-09-24 (+162d) | 3.75d → 3d? | 50% → 0% |  | constraint none → start no earlier than 2021-09-22 |
| 9 | Development kit specification | 2021-04-12 → 2021-10-04 (+175d) | 2021-04-12 → 2021-10-05 (+176d) | 1d? → 2d? |  |  | was named Development kit specification/user guide; constraint none → start no earlier than 2021-10-04 |
| 11 | Development kit examples/demos (To be moved to DVK group) | 2021-04-12 → 2021-05-03 (+21d) | 2021-04-12 → 2021-05-03 (+21d) |  |  |  |  |
| 12 | Characterization plan (testing operation of the first received board and chip)_ | 2021-04-12 → 2021-05-03 (+21d) | 2021-04-12 → 2021-05-05 (+23d) | 1d? → 3d? |  |  |  |
| 13 | **Project Setup** |  |  | 15.5d? → 16d? |  |  |  |
| 14 | Merge Quicklogic/OpenHW Repo |  | 2021-04-12 → 2021-05-03 (+21d) |  |  |  |  |
| 16 | **SoC Front End Design** |  | 2021-07-05 → 2021-09-30 (+87d) | 45d? → 109d? |  |  |  |
| 17 | Identify/procure the PLL source | 2021-05-03 → 2021-09-20 (+140d) | 2021-05-03 → 2021-09-24 (+144d) | 1d? → 5d |  |  | constraint start no earlier than 2021-05-03 → start no earlier than 2021-09-20 |
| 18 | Design verification plan, including bare-metal for verification |  | 2021-05-07 → 2021-05-04 (-3d) | 5d → 2d |  |  |  |
| 59 | **Designs** |  |  |  | 68% → 70% |  |  |
| 60 | **RTL** |  |  |  | 68% → 70% |  |  |
| 91 | **Math Blocks** |  |  |  | 78% → 100% |  |  |
| 113 | EFPGA test |  |  |  |  |  | resources none → Randy |
| 116 | **RTL Verification** |  |  |  | 59% → 63% |  |  |
| 155 | **UDMA** |  |  |  | 58% → 90% |  |  |
| 169 | Logic test |  |  |  |  |  | resources none → CMC |
| 170 | EFPGA test |  |  |  |  |  | resources none → Randy |
| 171 | Memory test |  |  |  |  |  | resources none → CMC |
| 172 | FLL test |  |  |  |  |  | resources none → CMC |
| 175 | Get Synthesis Silicon Constraints |  |  |  |  |  | resources none → Greg |
| 176 | Define System Clock Constraints |  |  |  |  |  | resources none → Greg |
| 177 | Get Test Synthesis Constraints |  |  |  |  |  | resources none → Greg |
| 178 | Implement synthesis scripts |  |  |  |  |  | resources none → Greg |
| 179 | Execute Synthesis and Fix errors |  |  |  |  |  | resources none → Greg |
| 218 | RC Backend feedback update |  |  |  |  |  | resources none → CMC |
| 219 | Silver Backend feedback update |  |  |  |  |  | resources none → CMC |
| 229 | Start place and route |  |  |  |  | none → 26 |  |
| 233 | **SoC Packaging and Test** | 2021-04-12 → 2021-05-03 (+21d) | 2021-04-12 → 2021-10-01 (+172d) | 1d? → 110d? |  |  |  |
| 234 | Production test plan (IC) | 2021-04-12 → 2021-09-27 (+168d) | 2021-04-12 → 2021-10-01 (+172d) | 1d? → 5d? |  | none → 231 | constraint none → start no earlier than 2021-09-27 |
| 235 | Packaging plan - low volume, ~50 I/Os, wire-bonding | 2021-04-12 → 2021-05-03 (+21d) | 2021-04-12 → 2021-05-03 (+21d) |  |  |  |  |
| 236 | Chip packaging | 2021-04-12 → 2021-05-03 (+21d) | 2021-04-12 → 2021-05-03 (+21d) |  |  |  |  |
| 237 | Chip/packaging test | 2021-04-12 → 2021-05-03 (+21d) | 2021-04-12 → 2021-05-03 (+21d) |  |  |  |  |
| 238 | **Bench PCB Design and Manufacture** | 2021-04-12 → 2021-10-18 (+189d) | 2021-04-12 → 2021-12-08 (+240d) | 1d? → 38d? |  |  |  |
| 239 | PCB Specification | 2021-04-12 → 2021-10-18 (+189d) | 2021-04-12 → 2021-10-22 (+193d) | 1d? → 5d? |  |  | constraint none → start no earlier than 2021-10-18 |
| 240 | PCB Schematic Design | 2021-04-12 → 2021-10-25 (+196d) | 2021-04-12 → 2021-10-29 (+200d) | 1d? → 5d? |  | none → 239 | was named PCB Design; constraint none → start no earlier than 2021-10-25 |
| 242 | PCB manufacturing and assembly | 2021-04-12 → 2021-11-08 (+210d) | 2021-04-12 → 2021-12-03 (+235d) | 1d? → 20d? |  | none → 240, 241 | constraint none → start no earlier than 2021-11-08 |
| 243 | Initial bringup PCB testing | 2021-04-12 → 2021-12-06 (+238d) | 2021-04-12 → 2021-12-08 (+240d) | 1d? → 3d? |  | none → 242 | constraint none → start no earlier than 2021-12-06 |
| 245 | **DVK PCB Design and Manufacture** | 2021-04-12 → 2021-11-08 (+210d) | 2021-04-12 → 2022-01-17 (+280d) | 1d? → 51d? |  |  |  |
| 246 | PCB Specification | 2021-04-12 → 2021-11-08 (+210d) | 2021-04-12 → 2021-11-12 (+214d) | 1d? → 5d? |  | none → 241 | constraint none → start no earlier than 2021-11-08 |
| 249 | PCB manufacturing and assembly | 2021-04-12 → 2021-12-09 (+241d) | 2021-04-12 → 2022-01-05 (+268d) | 1d? → 20d? |  | none → 243, 248 | constraint none → start no earlier than 2021-12-09 |
| 250 | Initial bringup PCB testing | 2021-04-12 → 2022-01-06 (+269d) | 2021-04-12 → 2022-01-10 (+273d) | 1d? → 3d? |  | none → 249 | constraint none → start no earlier than 2022-01-06 |

## Version 3 (saved 2021-10-05, file Core-V-MCU-SoC-Plan_V1.4.pod)

Last finish 2022-01-17 → 2022-05-10 (+113d). Complete tasks 109 → 115.

Added:

| ID | Task | Duration | Start | Finish | Predecessors | Constraint | Resources |
| --- | --- | --- | --- | --- | --- | --- | --- |
| 229 | Initial (informal) place and route | 1d? | 2021-05-03 | 2021-05-03 |  |  |  |
| 231 | Publish GDS Freeze checklist to Github | 5d | 2021-11-15 | 2021-11-22 |  | start no earlier than 2021-11-15 | CMC |
| 233 | Complete Design submission (MPW2245, est. delivery date 2022-06-30) | 1d | 2022-01-25 | 2022-01-26 |  | start no earlier than 2022-01-25 | CMC |
| 238 | Chip package design complete | 10d | 2022-01-28 | 2022-02-11 | 237 | start no earlier than 2022-01-28 | CMC |
| 239 | Device test complete | 1d? | 2022-03-31 | 2022-04-01 | 245 |  | Tuan |
| 241 | Upload PCB Specification to Github | 5d? | 2021-10-18 | 2021-10-22 |  | start no earlier than 2021-10-18 | Anthony |
| 254 | **Test SW Integration** | 1d? | 2021-05-03 | 2021-05-03 |  |  |  |
| 255 | Structure prototype HAL as needed from PULP SDK | 1d? | 2021-05-03 | 2021-05-03 |  |  | Greg |
| 256 | Initial FreeRTOS/HAL/MCU integration | 1d? | 2021-05-03 | 2021-05-03 |  |  | Greg |
| 257 | Complete Starter project | 1d? | 2021-05-03 | 2021-05-03 |  |  | Greg |
| 258 | Specify and complete FreeRTOS demo application (TensorFlow Lite); | 1d? | 2021-05-03 | 2021-05-03 |  |  | Greg |

Removed: 230 GDS Freeze checklist; 232 Design submission (MPW2243, est. delivery date 2022-03-31); 235 Packaging plan - low volume, ~50 I/Os, wire-bonding

Changed:

| ID | Task | Start | Finish | Duration | Complete | Predecessors | Other |
| --- | --- | --- | --- | --- | --- | --- | --- |
| 1 | **Core-V-MCU-SoC (Arnold2)** |  | 2022-01-17 → 2022-05-10 (+113d) | 201d? → 281.12d? | 28% → 29% |  |  |
| 2 | **Documentation and Gate Review** |  | 2021-12-09 → 2022-04-01 (+113d) | 174d? → 254.12d? |  |  |  |
| 6 | User Manual (ReadTheDocs) | 2021-09-27 → 2022-02-16 (+142d) | 2021-09-27 → 2022-02-17 (+143d) |  |  |  |  |
| 7 | Datasheet include operating conditions, AC/DC parameters, basic timing information | 2021-12-09 → 2022-03-31 (+112d) | 2021-12-09 → 2022-04-01 (+113d) |  |  |  |  |
| 16 | **SoC Front End Design** |  | 2021-09-30 → 2022-01-26 (+118d) | 109d? → 192.46d? | 50% → 51% |  |  |
| 19 | **Design Completion** | 2021-05-03 → 2021-09-29 (+149d) | 2021-09-30 → 2022-01-26 (+118d) | 109d? → 85.46d? | 0% → 34% |  |  |
| 20 | PLL connected | 2021-09-27 → 2021-09-29 (+2d) | 2021-09-27 → 2021-09-29 (+2d) |  |  |  |  |
| 21 | eFPGA test mode | 2021-05-03 → 2021-09-29 (+149d) | 2021-05-04 → 2021-09-30 (+149d) |  |  |  |  |
| 22 | Resolve IO details such as POWEROK signal | 2021-09-28 → 2021-09-30 (+2d) | 2021-09-28 → 2021-09-30 (+2d) |  |  |  |  |
| 23 | Triage error/warning messages |  |  |  | 0% → 70% |  |  |
| 24 | SDC time constraints | 2021-09-30 → 2021-10-01 (+1d) | 2021-09-30 → 2021-10-01 (+1d) |  | 0% → 100% |  |  |
| 25 | Resolve blackboxes such as register files |  |  |  | 0% → 100% |  |  |
| 26 | Run all verification test on post synthesis | 2021-05-03 → 2021-09-29 (+149d) | 2021-05-03 → 2021-09-29 (+149d) |  |  |  |  |
| 27 | Run all verification test on post P&R netlist | 2021-09-27 → 2022-01-26 (+121d) | 2021-09-27 → 2022-01-26 (+121d) |  |  |  |  |
| 28 | **RTL Handoff** |  |  |  |  |  | was named RTL Freeze |
| 228 | **SoC BackEnd design** | 2021-07-05 → 2021-05-03 (-63d) | 2021-09-24 → 2022-02-16 (+145d) | 60d → 207.12d? |  |  |  |
| 230 | Start place and route | 2021-07-05 → 2021-11-15 (+133d) | 2021-07-05 → 2021-11-16 (+134d) |  |  |  | constraint start no earlier than 2021-07-05 → start no earlier than 2021-11-15 |
| 232 | Complete place and route, GDS | 2021-07-05 → 2021-11-15 (+133d) | 2021-09-24 → 2022-01-26 (+124d) | 60d → 52d |  |  | constraint start no earlier than 2021-07-05 → start no earlier than 2021-11-15 |
| 234 | Final submission date for MPW2245 | 2021-09-27 → 2022-02-15 (+141d) | 2021-10-01 → 2022-02-16 (+138d) | 5d? → 1d? |  | 232 → none | was named Production test plan (IC); constraint start no earlier than 2021-09-27 → start no earlier than 2022-02-15; resources Anthony → CMC |
| 235 | **SoC Packaging and Test** | 2021-05-03 → 2022-01-26 (+268d) | 2021-10-01 → 2022-04-01 (+182d) | 110d? → 47d? |  |  |  |
| 236 | Prepare IC production test plan and upload to Github | 2021-05-03 → 2022-01-26 (+268d) | 2021-05-03 → 2022-02-02 (+275d) | 1d? → 5d? |  | none → 232 | was named Chip packaging; constraint none → start no earlier than 2021-09-27; resources CMC → Anthony |
| 237 | Prepare packaging plan (low volume, ~50 I/Os, wire-bonding) and upload to Github | 2021-05-03 → 2022-01-26 (+268d) | 2021-05-03 → 2022-01-27 (+269d) | 1d? → 1d |  | none → 232 | was named Chip/packaging test; resources Tuan → CMC |
| 240 | **Bench PCB Design and Manufacture** | 2021-10-18 → 2021-05-03 (-168d) | 2021-12-08 → 2022-03-31 (+113d) | 38d? → 238.12d? |  |  |  |
| 242 | PCB Schematic Design |  |  | 5d? → 5d |  | 248 → 241 |  |
| 243 | PCB Layout | 2021-10-25 → 2022-02-11 (+109d) | 2021-11-05 → 2022-02-25 (+112d) | 10d? → 10d |  | 248 → 238, 241 |  |
| 244 | PCB manufacturing and assembly | 2021-11-08 → 2022-02-28 (+112d) | 2021-12-03 → 2022-03-28 (+115d) |  |  |  | constraint start no earlier than 2021-11-08 → start no earlier than 2022-02-28 |
| 245 | Initial bringup PCB testing | 2021-12-06 → 2022-03-28 (+112d) | 2021-12-08 → 2022-03-31 (+113d) | 3d? → 3d |  |  |  |
| 246 | Characterization plan (testing operation of the first received board and chip) complete and upload to Github | 2021-11-08 → 2021-05-03 (-189d) | 2021-11-12 → 2021-05-03 (-193d) | 5d? → 1d? |  | 243 → none | was named PCB Specification; constraint start no earlier than 2021-11-08 → none; resources Anthony → none |
| 247 | **DVK PCB Design and Manufacture** | 2021-11-08 → 2022-02-25 (+109d) | 2022-01-17 → 2022-05-10 (+113d) | 51d? → 52d? |  |  |  |
| 248 | PCB Specification | 2021-10-18 → 2022-02-25 (+130d) | 2021-10-22 → 2022-03-04 (+133d) |  |  | none → 243 | constraint start no earlier than 2021-10-18 → start no earlier than 2021-11-08 |
| 249 | PCB Schematic Design | 2021-11-15 → 2022-03-04 (+109d) | 2021-11-19 → 2022-03-11 (+112d) |  |  | 246 → 248 |  |
| 250 | PCB Layout | 2021-11-22 → 2022-03-11 (+109d) | 2021-12-03 → 2022-03-25 (+112d) |  |  |  |  |
| 251 | PCB manufacturing and assembly | 2021-12-09 → 2022-03-31 (+112d) | 2022-01-05 → 2022-04-28 (+113d) |  |  |  |  |
| 252 | Initial bringup PCB testing | 2022-01-06 → 2022-04-28 (+112d) | 2022-01-10 → 2022-05-03 (+113d) |  |  |  |  |
| 253 | PCB User Guide | 2022-01-11 → 2022-05-03 (+112d) | 2022-01-17 → 2022-05-10 (+113d) |  |  |  |  |

## Version 4 (saved 2022-01-19, file Core-V-MCU-SoC-Plan_V1.5.pod)

Note of the change: Merge remote-tracking branch 'upstream/master'

Last finish 2022-05-10 → 2022-05-03 (-7d). Complete tasks 115 → 136.

Added:

| ID | Task | Duration | Start | Finish | Constraint | Resources |
| --- | --- | --- | --- | --- | --- | --- |
| 29 | **RTL Checklist** | 3d? | 2021-05-03 | 2021-05-05 | start no earlier than 2021-05-03 |  |
| 252 | Characterization plan (testing operation of the first received board and chip) complete and upload to Github | 0.5d? | 2022-04-28 | 2022-04-28 | start no earlier than 2022-04-28 | Anthony; James |

Removed: 140 FLL

Changed:

| ID | Task | Start | Finish | Duration | Complete | Other |
| --- | --- | --- | --- | --- | --- | --- |
| 1 | **Core-V-MCU-SoC (Arnold2)** |  | 2022-05-10 → 2022-05-03 (-7d) | 281.12d? → 276.5d? | 29% → 35% |  |
| 2 | **Documentation and Gate Review** |  | 2022-04-01 → 2022-05-03 (+32d) | 254.12d? → 276.5d? |  |  |
| 7 | Datasheet include operating conditions, AC/DC parameters, basic timing information | 2022-03-31 → 2022-05-02 (+32d) | 2022-04-01 → 2022-05-03 (+32d) |  |  |  |
| 16 | **SoC Front End Design** |  |  |  | 51% → 62% |  |
| 17 | Identify/procure the PLL source |  |  |  | 0% → 100% |  |
| 19 | **Design Completion** |  |  |  | 34% → 49% |  |
| 22 | Resolve IO details such as POWEROK signal |  |  |  | 0% → 100% |  |
| 23 | Triage error/warning messages |  |  |  | 70% → 95% |  |
| 28 | RTL Handoff | 2021-05-03 → 2021-11-15 (+196d) | 2021-05-05 → 2021-11-15 (+194d) | 3d? → 0d | 69% → 0% | constraint start no earlier than 2021-05-03 → start no earlier than 2021-11-15 |
| 60 | **Designs** |  |  |  | 70% → 85% |  |
| 61 | **RTL** |  |  |  | 70% → 86% |  |
| 74 | **UDMA** |  |  |  | 58% → 73% |  |
| 79 | SDIO |  |  |  | 0% → 90% | resources none → Greg |
| 81 | **eFPGA** |  |  |  | 87% → 100% |  |
| 82 | Get VQ file running |  |  |  | 70% → 100% |  |
| 83 | Test VQ |  |  |  | 0% → 100% | resources none → Greg |
| 100 | **IO** |  |  |  | 23% → 75% |  |
| 101 | Define VDDIO scheme |  |  |  | 0% → 100% | resources none → Greg |
| 102 | Define physical I/O ring |  |  |  |  | resources none → CMC |
| 103 | Finalize pin-table |  |  |  | 90% → 100% |  |
| 104 | Integrate IO ring |  |  |  | 0% → 100% | resources none → Greg |
| 108 | **Power Management** |  |  |  | 0% → 100% |  |
| 109 | Decide on LDO |  |  |  | 0% → 100% |  |
| 110 | Source LDO |  |  |  | 0% → 100% |  |
| 111 | Integrate |  |  |  | 0% → 100% |  |
| 117 | **RTL Verification** |  |  |  | 63% → 80% |  |
| 118 | **Setup Verification Environment** |  |  |  | 50% → 85% |  |
| 121 | **Collect/Create Peripherals (VPI)** |  |  |  | 50% → 77% |  |
| 122 | SPI Flash |  |  |  | 0% → 100% | resources none → Greg |
| 126 | SDIO |  |  |  | 0% → 90% |  |
| 129 | **Collect/Create Behavioral models for Hard IPs** |  |  |  | 0% → 80% |  |
| 130 | ROM |  |  |  | 0% → 100% |  |
| 131 | L2 RAM |  |  |  | 0% → 100% |  |
| 132 | Inferred RAM I2C M |  |  |  | 0% → 100% |  |
| 133 | Math Block Register File |  |  |  | 0% → 100% |  |
| 139 | **APB** |  |  |  | 77% → 92% |  |
| 147 | **SoC Control** |  |  |  | 83% → 99% |  |
| 149 | PAD Config |  |  |  | 0% → 100% | resources none → Greg |
| 150 | WatchDog Timer |  |  |  | 90% → 100% |  |
| 173 | **Design Compiler Synthesis** |  |  |  | 0% → 98% |  |
| 174 | **Constraints Setup** |  |  |  | 0% → 100% |  |
| 175 | Get Synthesis Silicon Constraints |  |  |  | 0% → 100% |  |
| 176 | Define System Clock Constraints |  |  |  | 0% → 100% |  |
| 177 | Get Test Synthesis Constraints |  |  |  | 0% → 100% |  |
| 178 | Implement synthesis scripts |  |  |  | 0% → 100% |  |
| 179 | Execute Synthesis and Fix errors |  |  |  | 0% → 90% |  |
| 235 | **SoC Packaging and Test** |  | 2022-04-01 → 2022-03-16 (-16d) | 47d? → 35.5d? |  |  |
| 239 | Device test complete | 2022-03-31 → 2022-03-15 (-16d) | 2022-04-01 → 2022-03-16 (-16d) |  |  |  |
| 240 | **Bench PCB Design and Manufacture** | 2021-05-03 → 2021-10-18 (+168d) | 2022-03-31 → 2022-05-02 (+32d) | 238.12d? → 140.5d? |  |  |
| 241 | Upload PCB Specification to Github |  | 2021-10-22 → 2021-10-20 (-2d) | 5d? → 2.5d? |  | resources Anthony → Anthony; James |
| 242 | PCB Schematic Design |  | 2021-10-29 → 2021-10-27 (-2d) | 5d → 2.5d |  | resources Anthony → Anthony; James |
| 243 | PCB Layout |  | 2022-02-25 → 2022-02-18 (-7d) | 10d → 5d |  | resources Anthony → Anthony; James |
| 244 | PCB manufacturing and assembly |  | 2022-03-28 → 2022-03-14 (-14d) | 20d? → 10d? |  | resources Anthony → Anthony; James |
| 245 | Initial bringup PCB testing | 2022-03-28 → 2022-03-14 (-14d) | 2022-03-31 → 2022-03-15 (-16d) | 3d → 1.5d |  | resources Anthony → Anthony; James |
| 246 | Characterization plan (testing operation of the first received board and chip) complete and upload to Github | 2021-05-03 → 2022-05-02 (+364d) | 2021-05-03 → 2022-05-02 (+364d) | 1d? → 0.5d? |  | constraint none → start no earlier than 2022-05-02; resources none → Anthony; James |
| 247 | **DVK PCB Design and Manufacture** | 2022-02-25 → 2022-02-18 (-7d) | 2022-05-10 → 2022-04-28 (-12d) | 52d? → 49.38d? |  |  |
| 248 | Upload PCB Specification to github | 2022-02-25 → 2022-02-18 (-7d) | 2022-03-04 → 2022-02-22 (-10d) | 5d? → 2.5d? |  | was named PCB Specification; resources Anthony → Anthony; James |
| 249 | PCB Schematic Design | 2022-03-04 → 2022-02-22 (-10d) | 2022-03-11 → 2022-02-25 (-14d) | 5d? → 2.5d? |  | resources Anthony → Anthony; James |
| 250 | PCB Layout | 2022-03-11 → 2022-02-25 (-14d) | 2022-03-25 → 2022-03-04 (-21d) | 10d? → 5d? |  | resources Anthony → Anthony; James |
| 251 | PCB manufacturing and assembly | 2022-03-31 → 2022-03-15 (-16d) | 2022-04-28 → 2022-03-29 (-30d) | 20d? → 10d? |  | resources Anthony → Anthony; James |
| 253 | Initial bringup PCB testing | 2022-04-28 → 2022-03-29 (-30d) | 2022-05-03 → 2022-03-31 (-33d) | 3d? → 1.5d? |  | resources Anthony → Anthony; James |
| 254 | PCB User Guide | 2022-05-03 → 2022-03-31 (-33d) | 2022-05-10 → 2022-04-04 (-36d) | 5d? → 2.5d? |  | resources Anthony → Anthony; James |
